# TrackIn - Cronograma de la Practica de Especialidad

How a schedule from MS Project XML changed from version to version. A marks actual dates.

## Version 1 (data date 2026-10-16, saved 2026-10-13, file Cronograma_TrackIn.xml)

Note of the change: Diagramas informe

| ID | WBS | Task | Duration | Start | Finish | Complete |
| --- | --- | --- | --- | --- | --- | --- |
| 1 | 1 | **Práctica de Especialidad TrackIn** | 90d | 2026-08-03 | 2026-12-04 | 63% |
| 2 | 1.1 | **Semana de inducción** | 5d | 2026-08-03 | 2026-08-07 | 100% |
| 3 |  | Configuración del entorno de desarrollo y del repositorio | 3d | 2026-08-03 | 2026-08-05 | 100% |
| 4 |  | Instalación de PostgreSQL 16 y PostGIS | 2d | 2026-08-06 | 2026-08-07 | 100% |
| 5 |  | Minuta 01 con el profesor asesor | 0d | 2026-08-07 | 2026-08-07 | 100% |
| 6 | 1.2 | **Sprint 1 · Requerimientos y viabilidad técnica** | 10d | 2026-08-10 | 2026-08-21 | 100% |
| 7 |  | SRS v0.1 | 2d | 2026-08-10 | 2026-08-11 | 100% |
| 8 |  | Levantamiento de requerimientos con las áreas usuarias | 3d | 2026-08-12 | 2026-08-14 | 100% |
| 9 |  | Minuta 02 con el profesor asesor y el supervisor | 0d | 2026-08-14 | 2026-08-14 | 100% |
| 10 |  | SRS v0.2 | 1d | 2026-08-14 | 2026-08-14 | 100% |
| 11 |  | Spike técnico TG-10 · AISStream | 3d | 2026-08-17 | 2026-08-19 | 100% |
| 12 |  | Spike técnico TG-11 · OpenSky Network | 2d | 2026-08-18 | 2026-08-19 | 100% |
| 13 |  | SRS v0.3 con los hallazgos de los spikes | 1d | 2026-08-20 | 2026-08-20 | 100% |
| 14 |  | Product backlog priorizado (TG-18) | 2d | 2026-08-20 | 2026-08-21 | 100% |
| 15 | 1.3 | **Sprint 2 · Análisis y diseño (OE1)** | 10d | 2026-08-24 | 2026-09-04 | 100% |
| 16 |  | Modelo de datos (TASK-12 a TASK-15) | 2d | 2026-08-24 | 2026-08-25 | 100% |
| 17 |  | Diccionario de datos (TASK-16 a TASK-19, TASK-24, TASK-26) | 2d | 2026-08-25 | 2026-08-26 | 100% |
| 18 |  | Arquitectura: componentes, despliegue y secuencia (TASK-20 a TASK-22) | 2d | 2026-08-26 | 2026-08-27 | 100% |
| 19 |  | Wireframes y prototipo navegable en Figma (US-34 a US-38, US-41) | 5d | 2026-08-27 | 2026-09-02 | 100% |
| 20 |  | Validación de prototipos con usuarios clave (US-39) | 0d | 2026-09-02 | 2026-09-02 | 100% |
| 21 |  | SRS v0.4 (TASK-25) | 2d | 2026-09-03 | 2026-09-04 | 100% |
| 22 | 1.4 | **Sprint 3 · Persistencia e ingesta (OE2 y OE4)** | 10d | 2026-09-07 | 2026-09-18 | 100% |
| 23 |  | Esquema, migraciones y PostGIS (TASK-01, TASK-02) | 2d | 2026-09-07 | 2026-09-08 | 100% |
| 24 |  | Maestros de países y destinos (TASK-29, TASK-31) | 1d | 2026-09-09 | 2026-09-09 | 100% |
| 25 |  | Contrato de referencia e ingesta semilla (TASK-30, TASK-03, US-01) | 2d | 2026-09-10 | 2026-09-11 | 100% |
| 26 |  | Resiliencia, AIS e historial de posiciones (US-02, US-03, US-04) | 3d | 2026-09-14 | 2026-09-16 | 100% |
| 27 |  | Spike de fuentes comerciales (TASK-28) | 3d | 2026-09-14 | 2026-09-16 | 100% |
| 28 |  | Consolidación del Informe 1 (TASK-23) | 2d | 2026-09-17 | 2026-09-18 | 100% |
| 29 | 1.5 | **Sprint 4 · Ingesta real, fuentes comerciales y motor de cálculo** | 10d | 2026-09-21 | 2026-10-02 | 100% |
| 30 |  | Carga y validación del archivo Z-tracking (US-31, US-32) | 2d | 2026-09-21 | 2026-09-22 | 100% |
| 31 |  | Motor de cálculo: fecha proyectada, estado y arribo (US-09, US-10, US-11) | 2d | 2026-09-22 | 2026-09-23 | 100% |
| 32 |  | Integración con ShipsGo marítimo y aéreo (US-45, US-46) | 2d | 2026-09-23 | 2026-09-24 | 100% |
| 33 |  | Planificador, OpenSky y ETA estimada (US-07, US-05, US-06, US-08) | 2d | 2026-09-24 | 2026-09-25 | 100% |
| 34 |  | Entrega del primer informe de avance | 0d | 2026-09-25 | 2026-09-25 | 100% |
| 35 |  | Guías hijas por TICA (US-49) | 1d | 2026-09-28 | 2026-09-28 | 100% |
| 36 |  | Reunión de seguimiento con el profesor asesor y la empresa | 0d | 2026-09-28 | 2026-09-28 | 100% |
| 37 |  | Worker de rastreo y salud de las fuentes (US-50, US-51) | 2d | 2026-09-29 | 2026-09-30 | 100% |
| 38 |  | Reunión con Compras y usuarios clave | 0d | 2026-09-29 | 2026-09-29 | 100% |
| 39 |  | Puerto de llegada desde ShipsGo (US-52) y pruebas en vivo | 2d | 2026-09-30 | 2026-10-01 | 100% |
| 40 |  | Revisión y cierre del Sprint 4 con el supervisor | 0d | 2026-10-02 | 2026-10-02 | 100% |
| 41 | 1.6 | **Sprint 5 · Reglas de negocio, API y seguridad** | 10d | 2026-10-05 | 2026-10-16 | 100% |
| 42 |  | API REST de pedidos y documentación OpenAPI (US-16, TASK-04) | 2d | 2026-10-05 | 2026-10-06 | 100% |
| 43 |  | Reunión con Compras: prototipo final, ShipsGo y MAWB | 0d | 2026-10-06 | 2026-10-06 | 100% |
| 44 |  | Recálculo y configuración fuera del código (US-12, US-17) | 2d | 2026-10-06 | 2026-10-07 | 100% |
| 45 |  | Reunión con el supervisor: no existirá API de SAP | 0d | 2026-10-07 | 2026-10-07 | 100% |
| 46 |  | Fecha comprometida y puerto de llegada (US-53, US-54) | 1d | 2026-10-07 | 2026-10-07 | 100% |
| 47 |  | Spike Parcels (TASK-32) y maestro de destinos (US-13) | 2d | 2026-10-08 | 2026-10-09 | 100% |
| 48 |  | Autenticación, sesión y roles (US-42) | 2d | 2026-10-09 | 2026-10-12 | 100% |
| 49 |  | Auditoría de intervenciones (US-15) | 2d | 2026-10-12 | 2026-10-13 | 100% |
| 50 |  | Desembarco, paso a aduana y recepción (US-14, US-18) | 2d | 2026-10-13 | 2026-10-14 | 100% |
| 51 |  | Liberación de Calidad y ajuste manual (US-47, US-40) | 2d | 2026-10-14 | 2026-10-15 | 100% |
| 52 |  | Revisión y cierre del Sprint 5 con el supervisor | 0d | 2026-10-16 | 2026-10-16 | 100% |
| 53 | 1.7 | **Sprint 6 · Dashboard web y carga desde la interfaz** | 10d | 2026-10-19 | 2026-10-30 |  |
| 54 |  | Andamiaje del frontend y grilla de pedidos (TASK-05, US-19) | 3d | 2026-10-19 | 2026-10-21 |  |
| 55 |  | Carga del Z-tracking desde la interfaz (US-58) | 2d | 2026-10-21 | 2026-10-22 |  |
| 56 |  | Entrega del segundo informe de avance | 0d | 2026-10-23 | 2026-10-23 |  |
| 57 |  | Detalle, filtros y cinta de KPIs (US-20, US-21, US-22) | 4d | 2026-10-22 | 2026-10-27 |  |
| 58 |  | Semáforo, frescura, próximos arribos y bandeja (US-23, US-24, US-28, US-48) | 2d | 2026-10-27 | 2026-10-28 |  |
| 59 |  | Vistas por rol, alta de embarques y saldo de créditos (US-43, US-55, US-57) | 2d | 2026-10-29 | 2026-10-30 |  |
| 60 | 1.8 | **Sprint 7 · Mapas, historial y validación de la carga** | 10d | 2026-11-02 | 2026-11-13 |  |
| 61 |  | Mapa interactivo marítimo (US-25) | 3d | 2026-11-02 | 2026-11-04 |  |
| 62 |  | Mapa interactivo aéreo (US-26) | 2d | 2026-11-05 | 2026-11-06 |  |
| 63 |  | Información emergente y detalle con país de origen (US-27, US-44) | 2d | 2026-11-09 | 2026-11-10 |  |
| 64 |  | Plantilla y validación de formato del Z-tracking (US-59) | 2d | 2026-11-10 | 2026-11-11 |  |
| 65 |  | Historial, trayecto y transbordos (US-29, US-30) | 2d | 2026-11-11 | 2026-11-12 |  |
| 66 |  | Pantalla de planta y retención del historial (US-33, TASK-10) | 1d | 2026-11-13 | 2026-11-13 |  |
| 67 | 1.9 | **Cierre · Pruebas y documentación** | 5d | 2026-11-16 | 2026-11-21 |  |
| 68 |  | Pruebas de integración extremo a extremo (TASK-06) | 3d | 2026-11-16 | 2026-11-18 |  |
| 69 |  | Manual de instalación y manual de usuario (TASK-07, TASK-08) | 2d | 2026-11-18 | 2026-11-19 |  |
| 70 |  | Entrega del informe final | 0d | 2026-11-20 | 2026-11-20 |  |

| ID | WBS | Task | Duration | Start | Finish |
| --- | --- | --- | --- | --- | --- |
| 71 |  | Guía de despliegue para producción (TASK-09) | 2d | 2026-11-19 | 2026-11-20 |
| 72 |  | Fin de la práctica y demostración funcional | 0d | 2026-11-21 | 2026-11-21 |
| 73 | 1.10 | **Extensión opcional** | 10d | 2026-11-23 | 2026-12-04 |
| 74 |  | Correcciones derivadas de la validación con usuarios | 5d | 2026-11-23 | 2026-11-27 |
| 75 |  | Traspaso técnico al Centro de Competencias | 5d | 2026-11-30 | 2026-12-04 |

## Version 2 (data date 2026-10-16, saved 2026-10-19, file Cronograma_TrackIn.xml)

Note of the change: Correcciones diagramas

Last finish stays 2026-12-04.

Changed:

| ID | Task | Other |
| --- | --- | --- |
| 6 | **Sprint 1: Requerimientos y viabilidad técnica** | was named Sprint 1 · Requerimientos y viabilidad técnica |
| 11 | Spike técnico TG-10: AISStream | was named Spike técnico TG-10 · AISStream |
| 12 | Spike técnico TG-11: OpenSky Network | was named Spike técnico TG-11 · OpenSky Network |
| 15 | **Sprint 2: Análisis y diseño (OE1)** | was named Sprint 2 · Análisis y diseño (OE1) |
| 22 | **Sprint 3: Persistencia e ingesta (OE2 y OE4)** | was named Sprint 3 · Persistencia e ingesta (OE2 y OE4) |
| 29 | **Sprint 4: Ingesta real, fuentes comerciales y motor de cálculo** | was named Sprint 4 · Ingesta real, fuentes comerciales y motor de cálculo |
| 41 | **Sprint 5: Reglas de negocio, API y seguridad** | was named Sprint 5 · Reglas de negocio, API y seguridad |
| 53 | **Sprint 6: Dashboard web y carga desde la interfaz** | was named Sprint 6 · Dashboard web y carga desde la interfaz |
| 60 | **Sprint 7: Mapas, historial y validación de la carga** | was named Sprint 7 · Mapas, historial y validación de la carga |
| 67 | **Cierre: Pruebas y documentación** | was named Cierre · Pruebas y documentación |

## Version 3 (data date 2026-11-20, saved 2026-11-09, file Cronograma_TrackIn_final.xml)

Note of the change: Preparación informe final

Last finish 2026-12-04 → 2026-11-27 (-7d). Complete tasks 45 → 64.

Added:

| ID | Task | Duration | Start | Finish |
| --- | --- | --- | --- | --- |
| 60 | Contrato y receptor de la API de SAP (US-64, US-65, US-66) | 2d | 2026-10-27 | 2026-10-28 |
| 63 | Mapas interactivos marítimo y aéreo (US-25, US-26) | 3d | 2026-11-02 | 2026-11-04 |
| 65 | Reunión con el profesor asesor (minuta 21) | 0d | 2026-11-06 | 2026-11-06 |
| 68 | ETA manual, pantalla permanente y retención del historial (US-67, US-33, TASK-10) | 2d | 2026-11-11 | 2026-11-12 |
| 76 | Presentación final del proyecto | 0d | 2026-11-27 | 2026-11-27 |

Removed: 62 Mapa interactivo aéreo (US-26); 66 Pantalla de planta y retención del historial (US-33, TASK-10); 71 Guía de despliegue para producción (TASK-09); 74 Correcciones derivadas de la validación con usuarios

Changed:

| ID | Task | Start | Finish | Duration | Complete | Other |
| --- | --- | --- | --- | --- | --- | --- |
| 1 | **Práctica de Especialidad TrackIn** |  | 2026-12-04 → 2026-11-27 (-7d) | 90d → 85d | 63% → 100% |  |
| 53 | **Sprint 6: Dashboard web, carga desde la interfaz e integración SAP** |  |  |  | 0% → 100% | was named Sprint 6: Dashboard web y carga desde la interfaz |
| 54 | Andamiaje del frontend, grilla y carga del Z-tracking (TASK-05, US-19, US-58) |  | 2026-10-21 → 2026-10-20 (-1d) | 3d → 2d | 0% → 100% | was named Andamiaje del frontend y grilla de pedidos (TASK-05, US-19) |
| 55 | Detalle, filtros, KPIs y próximos arribos (US-20, US-21, US-22, US-28) | 2026-10-21 → 2026-10-20 (-1d) |  | 2d → 3d | 0% → 100% | was named Carga del Z-tracking desde la interfaz (US-58) |
| 56 | Entrega del segundo informe de avance |  |  |  | 0% → 100% |  |
| 57 | Semáforo, frescura, vistas por rol y bandeja (US-23, US-24, US-43, US-48) | 2026-10-22 → 2026-10-23 (+1d) | 2026-10-27 → 2026-10-26 (-1d) | 4d → 2d | 0% → 100% | was named Detalle, filtros y cinta de KPIs (US-20, US-21, US-22) |
| 58 | Acciones del detalle, contraseña y usuarios (US-60, US-61, US-62) | 2026-10-27 → 2026-10-26 (-1d) | 2026-10-28 → 2026-10-27 (-1d) |  | 0% → 100% | was named Semáforo, frescura, próximos arribos y bandeja (US-23, US-24, US-28, US-48) |
| 59 | Reunión de entrega del Informe 2 con el profesor y la empresa | 2026-10-29 → 2026-10-27 (-2d) | 2026-10-30 → 2026-10-27 (-3d) | 2d → 0d | 0% → 100% | was named Vistas por rol, alta de embarques y saldo de créditos (US-43, US-55, US-57) |
| 61 | Altas en ShipsGo, saldo de créditos y pantalla de planta (US-55, US-57, US-63) | 2026-11-02 → 2026-10-28 (-5d) | 2026-11-04 → 2026-10-30 (-5d) |  | 0% → 100% | was named Mapa interactivo marítimo (US-25) |
| 62 | **Sprint 7: Mapas, historial y validación de la carga** |  |  |  | 0% → 100% |  |
| 64 | Información emergente y detalle con país de origen (US-27, US-44) | 2026-11-09 → 2026-11-04 (-5d) | 2026-11-10 → 2026-11-05 (-5d) |  | 0% → 100% |  |
| 66 | Plantilla y validación de formato del Z-tracking (US-59) | 2026-11-10 → 2026-11-05 (-5d) | 2026-11-11 → 2026-11-09 (-2d) | 2d → 3d | 0% → 100% |  |
| 67 | Historial, trayecto y transbordos (US-29, US-30) | 2026-11-11 → 2026-11-09 (-2d) | 2026-11-12 → 2026-11-10 (-2d) |  | 0% → 100% |  |
| 69 | Corrida en vivo del sistema con el profesor asesor | 2026-11-18 → 2026-11-13 (-5d) | 2026-11-19 → 2026-11-13 (-6d) | 2d → 0d | 0% → 100% | was named Manual de instalación y manual de usuario (TASK-07, TASK-08) |
| 70 | **Cierre: Pruebas y documentación** |  | 2026-11-21 → 2026-11-27 (+6d) | 5d → 10d | 0% → 100% |  |
| 71 | Pruebas de integración extremo a extremo (TASK-06) |  | 2026-11-18 → 2026-11-17 (-1d) | 3d → 2d | 0% → 100% |  |
| 72 | Manual de instalación y guía de despliegue (TASK-07, TASK-09) | 2026-11-21 → 2026-11-17 (-4d) | 2026-11-21 → 2026-11-18 (-3d) | 0d → 2d | 0% → 100% | was named Fin de la práctica y demostración funcional |
| 73 | Manual de usuario (TASK-08) | 2026-11-23 → 2026-11-18 (-5d) | 2026-12-04 → 2026-11-19 (-15d) | 10d → 2d | 0% → 100% | was named Extensión opcional |
| 74 | Entrega del informe final |  |  |  | 0% → 100% |  |
| 75 | Fin de la práctica | 2026-11-30 → 2026-11-21 (-9d) | 2026-12-04 → 2026-11-21 (-13d) | 5d → 0d |  | was named Traspaso técnico al Centro de Competencias |
